# plan

Schedule from MS Project, 2010-06-15 to 2010-09-01, status date 2010-06-21, A marks actual dates.

## Calendars

- Standard: Mon-Fri 08:00-12:00, 13:00-17:00; Sat-Sun off. Exceptions (off unless hours are given): 2010-07-31 to 2010-09-01 08:00-12:00, 13:00-17:00 (recurring).

## Resources

| Resource |
| --- |
| CN |

## Schedule

| ID | Task | Type | Duration | Start | Finish | Predecessors | Complete | Remaining | Total slack | Constraint | Deadline | Resources | Work | Actual work |
| --- | --- | --- | --- | --- | --- | --- | --- | --- | --- | --- | --- | --- | --- | --- |
| 1 | Set up of source control and continuous integration |  | 1d | 2010-06-15 A | 2010-06-15 A |  | 100% |  |  |  |  | CN | 8h | 8h |
| 2 | Implementation of rule engine |  | 2w | 2010-06-16 A | 2010-06-29 A | 1 | 100% |  |  | finish no earlier than 2010-06-29 |  | CN | 80h | 80h |
| 3 | Front end for tagger |  | 12d | 2010-06-30 A | 2010-07-15 A | 2 | 100% |  |  | finish no earlier than 2010-07-15 |  | CN | 96h | 96h |
| 4 | Creation of rule set for recognition |  | 2w | 2010-07-16 A | 2010-07-29 A | 2 | 100% |  |  |  |  | CN | 80h | 80h |
| 5 | Creation of rule set for normalisation |  | 13d | 2010-07-30 A | 2010-08-11 | 2 | 69% | 4.03d | 21d |  |  | CN | 89.6h | 57.36h |
| 6 | Write-up |  | 17d | 2010-08-16 | 2010-09-01 |  |  |  | 0d | must finish on 2010-09-01 | 2010-09-01 | CN | 136h |  |
| 7 | Hand in | milestone | 0d | 2010-09-01 | 2010-09-01 |  |  |  | 1d | start no earlier than 2010-09-01 |  |  |  |  |
